# Project Management Workploan

How a schedule from MS Project XML changed from version to version. A marks actual dates.

## Version 1 (data date 2000-04-19, saved 2009-07-13, file 01145024.xml)

Note of the change: initial check in

| ID | WBS | Task | Duration | Start | Finish | Predecessors | Total float |
| --- | --- | --- | --- | --- | --- | --- | --- |
| 1 | 1 | **Primary Market Research Schedule** | 79.5d | 2004-04-12 | 2004-07-30 |  | 0d |
| 2 | 2 | **Initiation Phase** | 13d | 2004-04-12 | 2004-04-28 |  | 0d |
| 3 | 1.1.1 | **Requirements Gathering & Analysis** | 4d | 2004-04-12 | 2004-04-15 |  | 0d |
| 4 |  | Define process for gathering requirements | 1d | 2004-04-12 | 2004-04-12 |  | 0d |
| 5 |  | Document project-stakeholder interviews | 1d | 2004-04-13 | 2004-04-13 | 4 | 0d |
| 6 |  | Analyze requirements | 1d | 2004-04-14 | 2004-04-14 | 5 | 0d |
| 7 |  | Create requirements document | 1d | 2004-04-15 | 2004-04-15 | 6 | 75.5d |
| 8 | 7 | **Project Charter Development** | 10d | 2004-04-15 | 2004-04-28 |  | 0d |
| 9 | 1.1.2.1 | **Business Case** | 2d | 2004-04-15 | 2004-04-16 |  | 0d |
| 10 |  | Document summary of business purpose justification | 2d | 2004-04-15 | 2004-04-16 | 6 | 74.5d |
| 11 |  | Define expected benefits | 2d | 2004-04-15 | 2004-04-16 | 6 | 0d |
| 12 | 1.1.2.2 | **Project Scope Definition (High Level)** | 5d | 2004-04-19 | 2004-04-23 |  | 0d |
| 13 |  | Define primary market research objectives | 3d | 2004-04-19 | 2004-04-21 | 11 | 0d |
| 14 |  | Define primary market research deliverables | 2d | 2004-04-22 | 2004-04-23 | 13 | 69.5d |
| 15 |  | Identify specific exclusions to scope | 2d | 2004-04-22 | 2004-04-23 | 13 | 0d |
| 16 |  | Establish high-level time, cost, and resource estimates | 2d | 2004-04-26 | 2004-04-27 | 15 | 67.5d |
| 17 |  | Establish list of key stakeholders | 2d | 2004-04-26 | 2004-04-27 | 15 | 0d |
| 18 |  | Document project charter | 1d | 2004-04-28 | 2004-04-28 | 17 | 0d |
| 19 |  | Project Charter Approval | 0d | 2004-04-28 | 2004-04-28 | 18 | 0d |
| 20 |  | Initiation Phase Approval | 0d | 2004-04-28 | 2004-04-28 | 19 | 0d |
| 22 | 1.2 | **Planning Phase** | 32.5d | 2004-04-29 | 2004-06-14 |  | 0d |
| 23 | 1.2.1 | **Project Plan Development** | 32.5d | 2004-04-29 | 2004-06-14 | 20 | 0d |
| 24 | 1.2.1.1 | **Scope Statement** | 4d | 2004-04-29 | 2004-05-04 |  | 0d |
| 25 |  | Create scope description (based on business objectives) | 2d | 2004-04-29 | 2004-04-30 | 20 | 22.5d |
| 26 |  | Define scope boundaries (both in and out of scope) | 2d | 2004-04-29 | 2004-04-30 | 20 | 0d |
| 27 |  | Define key project deliverables (including user-acceptable criteria) | 2d | 2004-05-03 | 2004-05-04 | 26 | 0d |
| 28 | 1.2.1.2 | **Work Breakdown Structure (WBS)** | 4d | 2004-05-05 | 2004-05-10 |  | 0d |
| 29 |  | Create WBS to work-level execution | 2d | 2004-05-05 | 2004-05-06 | 27 | 0d |
| 30 |  | Define task dependencies (including predecessors/successors) | 2d | 2004-05-07 | 2004-05-10 | 29 | 0d |
| 31 | 1.2.1.3 | **Performance Baseline Measurement** | 2d | 2004-05-11 | 2004-05-12 |  | 0d |
| 32 |  | Create schedule baseline (with expected resource effort) | 1d | 2004-05-11 | 2004-05-11 | 30 | 0d |
| 33 |  | Define budget baseline (with schedule and cost assumptions) | 1d | 2004-05-12 | 2004-05-12 | 32 | 56.5d |
| 34 |  | Establish baseline tolerance thresholds (trigger change control) | 1d | 2004-05-12 | 2004-05-12 | 32 | 0d |
| 35 | 1.2.1.4 | **Procurement Planning (Research Vendor Selection)** | 8d | 2004-05-05 | 2004-05-14 |  | 20.5d |
| 36 |  | Analyze market conditions | 1d | 2004-05-05 | 2004-05-05 | 24 | 20.5d |
| 37 |  | Analyze make-or-buy findings | 2d | 2004-05-06 | 2004-05-07 | 36 | 20.5d |
| 38 |  | Select contract type | 1d | 2004-05-10 | 2004-05-10 | 37 | 20.5d |
| 39 |  | Develop procurement management plan | 2d | 2004-05-11 | 2004-05-12 | 38 | 20.5d |
| 40 |  | Develop statement of work | 2d | 2004-05-13 | 2004-05-14 | 39 | 20.5d |
| 41 | 1.2.1.5 | **Project Schedule Plan** | 2.5d | 2004-05-13 | 2004-05-17 |  | 0d |
| 42 | 1.2.1.5.1 | **Project Milestones (PMs)** | 0.5d | 2004-05-13 | 2004-05-13 |  | 0d |
| 43 |  | Define major milestones (alignment with deliverables) | 0.5d | 2004-05-13 | 2004-05-13 | 34 | 0d |
| 44 | 1.2.1.5.2 | **Project Scheduling Work Plan** | 2d | 2004-05-13 | 2004-05-17 |  | 0d |
| 45 |  | Define standard PM and approval gates | 0.5d | 2004-05-13 | 2004-05-13 | 43 | 55.5d |
| 46 |  | Document WBS, milestones, and deliverables (dates and resourcing) | 2d | 2004-05-13 | 2004-05-17 | 43 | 54d |
| 47 |  | Document schedule baseline | 1d | 2004-05-13 | 2004-05-14 | 43 | 0d |
| 48 | 1.2.1.6 | **Resource Management** | 2d | 2004-05-14 | 2004-05-18 |  | 0d |
| 49 |  | Name project team members (with roles and responsibilities) | 2d | 2004-05-14 | 2004-05-18 | 47 | 53d |
| 50 |  | Define all project stakeholders (with roles and project team liaison) | 2d | 2004-05-14 | 2004-05-18 | 47 | 53d |
| 51 |  | Create org chart: project team, sponsor, steering committee, stakeholders | 2d | 2004-05-14 | 2004-05-18 | 47 | 0d |
| 52 | 1.2.1.7 | **Supporting PM Process Plans** | 19d | 2004-05-18 | 2004-06-14 |  | 0d |
| 53 | 1.2.1.7.1 | **Change Management** | 4d | 2004-05-18 | 2004-05-24 |  | 0d |
| 54 |  | Document change control procedure for budget and schedule baselines | 2d | 2004-05-18 | 2004-05-20 | 51 | 51d |
| 55 |  | Document change control for approved scope baseline | 2d | 2004-05-18 | 2004-05-20 | 51 | 0d |
| 56 |  | Document change control for systems modifications | 2d | 2004-05-20 | 2004-05-24 | 55 | 0d |
| 57 | 1.2.1.7.2 | **Risk Management** | 4d | 2004-05-24 | 2004-05-28 |  | 0d |
| 58 |  | Document risk process: prioritization, mitigation, and contingency guidelines | 2d | 2004-05-24 | 2004-05-26 | 56 | 0d |
| 59 |  | Document risk assessment for scope, budget, and schedule baselines | 2d | 2004-05-26 | 2004-05-28 | 58 | 0d |
| 60 | 1.2.1.7.3 | **Issues Management** | 2d | 2004-05-28 | 2004-06-01 |  | 0d |
| 61 |  | Document issues process: prioritization, resolution, and tracking guidelines | 2d | 2004-05-28 | 2004-06-01 | 59 | 43d |
| 62 |  | Document formal 3-tiered escalation: project manager, sponsor, and executives | 2d | 2004-05-28 | 2004-06-01 | 59 | 0d |
| 63 | 1.2.1.7.4 | **Communication Plan** | 4d | 2004-06-01 | 2004-06-07 |  | 0d |
| 64 |  | Document guidelines: project updates and stakeholder collaboration | 2d | 2004-06-01 | 2004-06-03 | 62 | 0d |
| 65 |  | Document guidelines for document repository access and controls | 2d | 2004-06-01 | 2004-06-03 | 62 | 41d |
| 66 |  | Document standard project team and executive status report guidelines | 2d | 2004-06-03 | 2004-06-07 | 64 | 0d |
| 67 | 1.2.1.7.5 | **Quality Assurance and Control Plan** | 2d | 2004-06-07 | 2004-06-09 |  | 0d |
| 68 |  | Define criteria for user-acceptance testing (with checklist) | 2d | 2004-06-07 | 2004-06-09 | 66 | 37d |
| 69 |  | Define criteria for cost/benefit analysis | 2d | 2004-06-07 | 2004-06-09 | 66 | 37d |
| 70 |  | Define criteria and process for periodic stakeholder satisfaction survey | 2d | 2004-06-07 | 2004-06-09 | 66 | 37d |
| 71 |  | Define criteria for "Lessons Learned" (during closeout) | 2d | 2004-06-07 | 2004-06-09 | 66 | 0d |

| ID | WBS | Task | Duration | Start | Finish | Predecessors | Total float | Constraint |
| --- | --- | --- | --- | --- | --- | --- | --- | --- |
| 72 |  | Create Draft Project Plan | 3d | 2004-06-09 | 2004-06-14 | 71 | 0d |  |
| 73 |  | Project Plan Approval | 0d | 2004-06-14 | 2004-06-14 | 72 | 0d |  |
| 74 |  | Planning Phase Approval | 0d | 2004-06-14 | 2004-06-14 | 73 | 0d |  |
| 76 | 1.3 | **Execution Phase** | 31d | 2004-06-14 | 2004-07-27 |  | 0d |  |
| 77 | 1.3.1 | **Brainstorming Marketing Idea** | 31d | 2004-06-14 | 2004-07-27 |  | 0d |  |
| 78 | 1.3.1.1 | **Prep Work** | 3.25d | 2004-06-14 | 2004-06-17 |  | 3.75d |  |
| 79 |  | Define objectives | 1d | 2004-06-14 | 2004-06-15 | 74 | 3.75d |  |
| 80 |  | Identify brainstorming team | 0.5d | 2004-06-15 | 2004-06-15 | 79 | 3.75d |  |
| 81 |  | Identify location | 0.25d | 2004-06-16 | 2004-06-16 | 80 | 3.75d |  |
| 82 |  | Develop agenda | 1d | 2004-06-16 | 2004-06-17 | 81 | 3.75d |  |
| 83 |  | Schedule facility | 0.25d | 2004-06-17 | 2004-06-17 | 82 | 3.75d |  |
| 84 |  | Arrange facilitator | 0.25d | 2004-06-17 | 2004-06-17 | 83 | 3.75d |  |
| 85 | 1.3.1.2 | **Brainstorming Session** | 5d | 2004-06-24 | 2004-07-01 |  | 3.75d |  |
| 86 |  | Analyze market condition | 0.5d | 2004-06-24 | 2004-06-25 | 84FS+5d | 3.75d |  |
| 87 |  | Identify risks | 1d | 2004-06-25 | 2004-06-28 | 86 | 3.75d |  |
| 88 |  | Select primary market research tool | 0.5d | 2004-06-28 | 2004-06-28 | 87 | 3.75d |  |
| 89 |  | Gather ideas | 1d | 2004-06-28 | 2004-06-29 | 88 | 3.75d |  |
| 90 |  | Analyze ideas | 0.5d | 2004-06-29 | 2004-06-30 | 89 | 3.75d |  |
| 91 |  | Develop research brief | 1d | 2004-06-30 | 2004-07-01 | 90 | 3.75d |  |
| 92 |  | Present to management | 0.5d | 2004-07-01 | 2004-07-01 | 91 | 3.75d |  |
| 93 | 1.3.1.3 | **Solicitation** | 12d | 2004-06-14 | 2004-06-30 |  | 0d |  |
| 94 |  | Define evaluation criteria | 1d | 2004-06-14 | 2004-06-15 | 40, 74 | 0d |  |
| 95 |  | Advertise Scope of Work (SOW) | 1d | 2004-06-15 | 2004-06-16 | 94 | 0d |  |
| 96 |  | Collect Proposals | 0d | 2004-06-30 | 2004-06-30 | 95FS+10d | 0d |  |
| 97 | 1.3.1.4 | **Source Selection (Research Vendor Selection)** | 5d | 2004-06-30 | 2004-07-07 |  | 0d |  |
| 98 |  | Evaluate proposals | 2d | 2004-06-30 | 2004-07-02 | 96 | 0d |  |
| 99 |  | Screen vendors | 2d | 2004-07-02 | 2004-07-06 | 98 | 0d |  |
| 100 |  | Negotiate contract | 1d | 2004-07-06 | 2004-07-07 | 99 | 0d |  |
| 101 |  | Select Vendor | 0d | 2004-07-07 | 2004-07-07 | 100 | 0d |  |
| 102 | 1.3.1.5 | **Primary Market Research Tool Development** | 14d | 2004-07-07 | 2004-07-27 |  | 0d |  |
| 103 |  | Identify method of survey (phone, in-person, Internet, magazines, etc.) | 1d | 2004-07-07 | 2004-07-08 | 101, 92 | 0d |  |
| 104 |  | Identify minimum number of samples | 0.5d | 2004-07-08 | 2004-07-08 | 103 | 0d |  |
| 105 |  | Identify test market | 1d | 2004-07-09 | 2004-07-09 | 104 | 0d |  |
| 106 |  | Identify demographics | 0.5d | 2004-07-12 | 2004-07-12 | 105 | 0d |  |
| 107 |  | Define questionnaire | 2d | 2004-07-12 | 2004-07-14 | 106 | 0d |  |
| 108 |  | Conduct research | 5d | 2004-07-14 | 2004-07-21 | 107 | 0d |  |
| 109 |  | Compile results | 2d | 2004-07-21 | 2004-07-23 | 108 | 0d |  |
| 110 |  | Generate report | 1d | 2004-07-23 | 2004-07-26 | 109 | 0d |  |
| 111 |  | Present report | 1d | 2004-07-26 | 2004-07-27 | 110 | 0d |  |
| 112 |  | Execution Phase Gateway Approval | 0d | 2004-07-27 | 2004-07-27 | 77 | 0d |  |
| 114 | 1.4 | **Closeout Phase** | 3.5d | 2004-07-27 | 2004-07-30 |  | 0d | start no earlier than 2004-07-27 |
| 115 |  | Contract Closeout | 1d | 2004-07-27 | 2004-07-27 |  | 2.5d |  |
| 116 |  | Launch project "Lessons Learned" review | 2d | 2004-07-27 | 2004-07-29 | 112 | 0d |  |
| 117 | 1.4.3 | **Establish process for archiving project data** | 1d | 2004-07-27 | 2004-07-28 | 112 | 2d |  |
| 118 |  | Archive documents | 1d | 2004-07-27 | 2004-07-28 | 112 | 2d |  |
| 119 |  | Conduct administrative closeout | 1d | 2004-07-29 | 2004-07-30 | 112, 116 | 0d |  |
| 120 |  | Closeout Phase Approval | 0d | 2004-07-30 | 2004-07-30 | 119 | 0d |  |

## Version 2 (saved 2009-07-13, file 01145024.xml.pod.xml)

Note of the change: initial check in

Last finish stays 2004-07-30.

Changed:

| ID | Task | Total float | Predecessors |
| --- | --- | --- | --- |
| 86 | Analyze market condition | 3.75d → 375d | 84FS+5d → 84FS+40h |
| 96 | Collect Proposals |  | 95FS+10d → 95FS+80h |
